Schedule from MS Project, 2024-02-01 to 2024-07-21, costs in р..
Microsoft

## Calendars

- Стандартный: Mon-Fri 09:00-13:00, 14:00-18:00; Sat off; Sun 09:00-13:00, 14:00-18:00.

## Resources

| Resource | Unit |
| --- | --- |
| Слесарь-водопроводчик |  |
| Штукатур |  |
| Подсобник |  |
| Плиточник |  |
| Плотник |  |
| АО «Светлый потолок» |  |
| Унитаз-компакт | шт |
| Ванна | шт |
| Раковина | шт |
| Смеситель с душем | шт |
| Плитка | м^2 |
| Панель | шт |
| Обои | рул |
| Навесной потолок |  |
| Паркет | м^2 |
| Доставка |  |

## Schedule

| ID | WBS | Task | Type | Duration | Start | Finish | Predecessors | Total slack | Free slack | Constraint | Resources | Work | Cost |
| --- | --- | --- | --- | --- | --- | --- | --- | --- | --- | --- | --- | --- | --- |
| 1 | 1 | 1 |  | 2d | 2024-02-21 | 2024-02-22 | 4 | 127.33d | 123d |  |  |  |  |
| 2 | 2 | Начало проекта | milestone | 0d | 2024-02-01 | 2024-02-01 |  | 14d | 1d |  |  |  |  |
| 3 | 3 | **Выравнивание стен** |  | 60d | 2024-02-02 | 2024-04-11 |  | 85.33d | 81d |  |  | 120h | 120,000 |
| 4 | 3.1 | Стены в спальне |  | 16d | 2024-02-02 | 2024-02-20 | 2 | 85.33d | 0d | start no earlier than 2024-02-02 | Штукатур [25%] | 32h | 32,000 |
| 5 | 3.2 | Стены в гостиной |  | 16d | 2024-02-21 | 2024-03-10 | 4 | 85.33d | 0d | start no earlier than 2024-02-06 | Штукатур [25%] | 32h | 32,000 |
| 6 | 3.3 | Стены на кухне |  | 12d | 2024-03-11 | 2024-03-24 | 5 | 85.33d | 0d | start no earlier than 2024-02-09 | Штукатур [25%] | 24h | 24,000 |
| 7 | 3.4 | Стены в прихожей |  | 16d | 2024-03-25 | 2024-04-11 | 6 | 85.33d | 81d | start no earlier than 2024-02-14 | Штукатур [25%] | 32h | 32,000 |
| 8 | 4 | Выравнивание стен завершено | milestone | 0d | 2024-02-18 | 2024-02-18 |  | 35d |  | start no earlier than 2024-02-18 |  |  |  |
| 9 | 5 | **Санузел** |  | 35d | 2024-02-18 | 2024-03-28 |  | 0d |  |  |  | 96h | 487,000 |
| 10 | 5.1 | Снятие штукатурки в санузле |  | 3d | 2024-02-18 | 2024-02-20 | 2 | 0d |  | start no earlier than 2024-02-18 | Подсобник | 24h | 12,000 |
| 12 | 5.2 | Отделка потолка санузла |  | 6.67d | 2024-03-07 | 2024-03-20 |  | 0d |  | start no earlier than 2024-02-25 | Плиточник [30%]; Панель [5 шт] | 16h | 55,000 |
| 13 | 5.3 | Отделка пола санузла |  | 6.67d | 2024-03-20 | 2024-03-27 | 12 | 0d |  | start no earlier than 2024-02-27 | Плиточник [30%]; Плитка [5 м^2] | 16h | 80,000 |
| 14 | 5.4 | Установка сантехнического оборудования |  | 1d | 2024-03-28 | 2024-03-28 | 13 | 0d |  | start no earlier than 2024-02-29 | Слесарь-водопроводчик; Унитаз-компакт [1 шт] | 8h | 180,000 |
| 15 | 6 | Ремонт санузла завершен | milestone | 0d | 2024-03-28 | 2024-03-28 | 14 | 0d |  | start no earlier than 2024-03-01 |  |  |  |
| 16 | 7 | **Ванная** |  | 18.33d | 2024-03-03 | 2024-03-24 |  | 4.67d |  |  |  | 104h | 1,067,000 |
| 17 | 7.1 | Снятие штукатурки в ванной |  | 3d | 2024-03-03 | 2024-03-05 | 2 | 5d | 0d | start no earlier than 2024-03-02 | Подсобник | 24h | 12,000 |
| 18 | 7.2 | Отделка стен ванной |  | 5d | 2024-03-07 | 2024-03-13 | 17 | 4.67d | 0d | start no earlier than 2024-03-05 | Плиточник; Плитка [10 м^2] | 40h | 175,000 |
| 19 | 7.3 | Отделка потолка ванной |  | 4d | 2024-03-13 | 2024-03-18 | 18 | 4.67d | 0d | start no earlier than 2024-03-10 | Плиточник [50%]; Панель [6 шт] | 16h | 60,000 |
| 20 | 7.4 | Отделка пола ванной |  | 4d | 2024-03-18 | 2024-03-22 | 19 | 4.67d | 0d | start no earlier than 2024-03-12 | Плиточник [50%]; Плитка [6 м^2] | 16h | 90,000 |
| 21 | 7.5 | Установка сантехники |  | 1d | 2024-03-22 | 2024-03-24 | 20 | 4.67d | 0d | start no earlier than 2024-03-14 | Слесарь-водопроводчик; Ванна [1 шт]; Раковина [1 шт]; Смеситель с душем [1 шт] | 8h | 730,000 |
| 22 | 8 | Ремонт ванной завершен | milestone | 0d | 2024-03-24 | 2024-03-24 | 21 | 4.67d |  | start no earlier than 2024-03-15 |  |  |  |
| 23 | 9 | **Отделка стен** |  | 73.33d | 2024-03-29 | 2024-06-23 |  | 0d |  |  |  | 256h | 741,000 |
| 24 | 9.1 | Отделка стен в спальне |  | 16.67d | 2024-03-29 | 2024-04-17 | 8, 15, 22 | 0d |  | start no earlier than 2024-03-17 | Штукатур [30%]; Обои [8 рул] | 40h | 160,000 |
| 25 | 9.2 | Отделка стен в гостиной |  | 23.33d | 2024-04-17 | 2024-05-14 | 24 | 0d |  | start no earlier than 2024-03-22 | Штукатур [30%]; Обои [8 рул] | 56h | 176,000 |
| 26 | 9.3 | Отделка стен на кухне |  | 16.67d | 2024-05-15 | 2024-06-03 | 25 | 0d |  | start no earlier than 2024-03-26 | Штукатур [30%]; Плиточник [50%]; Плитка [5 м^2]; Панель [10 шт] | 80h | 215,000 |
| 27 | 9.4 | Отделка стен в прихожей |  | 16.67d | 2024-06-03 | 2024-06-23 | 26 | 0d |  | start no earlier than 2024-03-31 | Штукатур [30%]; Плиточник [50%]; Панель [15 шт] | 80h | 190,000 |
| 28 | 10 | Отделка стен завершена | milestone | 0d | 2024-06-23 | 2024-06-23 | 27 | 24d |  | start no earlier than 2024-04-02 |  |  |  |

| ID | WBS | Task | Type | Duration | Start | Finish | Predecessors | Total slack | Free slack | Constraint | Resources | Work | Cost |
| --- | --- | --- | --- | --- | --- | --- | --- | --- | --- | --- | --- | --- | --- |
| 29 | 11 | **Потолки** |  | 73.33d | 2024-04-03 | 2024-06-27 |  | 8d |  |  |  | 80h | 840,000 |
| 30 | 11.1 | Замер |  | 2d | 2024-04-03 | 2024-04-04 | 8 | 41.33d | 0d | start no earlier than 2024-04-03 | АО «Светлый потолок» | 16h | 20,000 |
| 31 | 11.2 | Заказ и оплата потолков |  | 2d | 2024-04-17 | 2024-04-18 | 30FS+10d | 41.33d | 0d | finish no earlier than 2024-04-18 | Навесной потолок |  | 700,000 |
| 32 | 11.3 | Навесной потолок в спальне |  | 4d | 2024-05-01 | 2024-05-05 | 24, 31FS+10d | 41.33d | 0d | start no earlier than 2024-04-07 | АО «Светлый потолок» [50%] | 16h | 20,000 |
| 33 | 11.4 | Навесной потолок в гостиной |  | 4d | 2024-05-15 | 2024-05-19 | 25, 31FS+10d | 29.33d | 0d | start no earlier than 2024-04-09 | АО «Светлый потолок» [50%] | 16h | 20,000 |
| 34 | 11.5 | Панельный потолок на кухне |  | 2d | 2024-06-03 | 2024-06-17 | 26, 31 | 17d | 0d | start no earlier than 2024-04-11 | Плиточник; Панель [6 шт] | 16h | 60,000 |
| 35 | 11.6 | Навесной потолок в прихожей |  | 4d | 2024-06-23 | 2024-06-27 | 27, 31 | 0d |  | start no earlier than 2024-04-13 | АО «Светлый потолок» [50%] | 16h | 20,000 |
| 36 | 12 | Монтаж потолков завершен | milestone | 0d | 2024-06-27 | 2024-06-27 | 32, 33, 34, 35 | 20d |  | start no earlier than 2024-04-15 |  |  |  |
| 37 | 13 | **Полы** |  | 65.33d | 2024-05-06 | 2024-07-21 |  | 0d |  |  |  | 160h | 1,425,000 |
| 38 | 13.1 | Отделка полов в спальне |  | 24d | 2024-05-06 | 2024-06-02 | 32 | 41.33d |  | start no earlier than 2024-04-16 | Плотник [25%]; Паркет [20 м^2] | 48h | 390,000 |
| 39 | 13.2 | Отделка полов в гостиной |  | 24d | 2024-05-20 | 2024-06-16 | 33 | 29.33d |  | start no earlier than 2024-04-22 | Плотник [25%]; Паркет [20 м^2] | 48h | 390,000 |
| 40 | 13.3 | Отделка полов на кухне |  | 12d | 2024-06-17 | 2024-07-01 | 34 | 17d |  | start no earlier than 2024-04-28 | Плотник [25%]; Паркет [20 м^2] | 24h | 345,000 |
| 41 | 13.4 | Отделка полов в прихожей |  | 20d | 2024-06-27 | 2024-07-21 | 35 | 0d |  | start no earlier than 2024-05-01 | Плотник [25%]; Паркет [15 м^2] | 40h | 300,000 |
| 42 | 14 | Отделка полов завершена | milestone | 0d | 2024-07-21 | 2024-07-21 | 38, 39, 40, 41 | 0d |  | start no earlier than 2024-05-06 |  |  |  |
| 43 | 15 | Конец проекта | milestone | 0d | 2024-07-21 | 2024-07-21 | 42 | 0d |  | start no earlier than 2024-05-07 |  |  |  |
