# lab1.1

Schedule from MS Project, 2024-09-24 to 2025-02-12, status date 2024-09-27, costs in ₽, A marks actual dates.

## Calendars

- Календарь 1: Mon-Fri 09:00-13:00; Sat-Sun off.

## Resources

| Resource | Unit | Rate | Cost per use |
| --- | --- | --- | --- |
| Слесарь-водопроводчик |  | 1250 | 20000 |
| Штукатур |  | 1000 |  |
| Подсобник |  | 500 |  |
| Плиточник |  | 1875 |  |
| АО "Светлый потолок" |  | 1250 |  |
| Унитаз-компакт | штука | 150000 |  |
| Ванна | штука | 350000 |  |
| Раковина | штука | 250000 |  |
| Смеситель с душем | штука | 100000 |  |
| Плитка | м^2 | 10000 |  |
| Панель | штука | 5000 |  |
| Обои | рулон | 15000 |  |
| Навесной потолок |  |  | 700000 |
| Паркет | м^2 | 15000 |  |
| Доставка |  |  |  |
| Плотник |  | 1875 |  |
| Тест |  |  |  |

## Schedule

| ID | WBS | Task | Type | Duration | Start | Finish | Predecessors | Complete | Remaining | Total slack | Free slack | Resources | Work | Actual work | Cost | Actual cost |
| --- | --- | --- | --- | --- | --- | --- | --- | --- | --- | --- | --- | --- | --- | --- | --- | --- |
| 1 | 1 | Начало проекта | milestone | 0d | 2024-09-24 A | 2024-09-24 |  | 99% | 0d | 3d | 0d |  |  |  |  |  |
| 2 | 2 | **Выравнивание стен** |  | 15d | 2024-09-24 A | 2024-11-04 |  | 20% | 12d | 0d |  |  | 120h | 24h | 120,000 | 24,000 |
| 3 | 2.1 | Стены в спальне |  | 4d | 2024-09-24 A | 2024-10-03 | 1 | 75% | 1d | 0d |  | Штукатур | 32h | 24h | 32,000 | 24,000 |
| 4 | 2.2 | Стены в гостиной |  | 4d | 2024-10-04 | 2024-10-15 | 3 |  |  | 0d |  | Штукатур | 32h |  | 32,000 |  |
| 5 | 2.3 | Стены в кухне |  | 3d | 2024-10-16 | 2024-10-23 | 4 |  |  | 0d |  | Штукатур | 24h |  | 24,000 |  |
| 6 | 2.4 | Стены в прихожей |  | 4d | 2024-10-24 | 2024-11-04 | 5 |  |  | 0d |  | Штукатур | 32h |  | 32,000 |  |
| 7 | 2.5 | Выравнивание стен завершено | milestone | 0d | 2024-11-04 | 2024-11-04 | 6 |  |  | 0d |  |  |  |  |  |  |
| 8 | 3 | **Санузел** |  | 18.5d | 2024-09-24 A | 2024-11-13 |  | 33% | 12.33d | 32.5d |  |  | 72h | 8h | 445,000 |  |
| 9 | 3.1 | Снятие штукатурки в санузле |  | 3d | 2024-09-24 A | 2024-10-01 A | 1 | 100% |  |  |  |  |  |  |  |  |
| 10 | 3.2 | Отделка стен санузла |  | 4d | 2024-10-23 | 2024-11-01 | 9 |  |  | 32.5d | 0d | Плитка [10 м^2]; Плиточник | 32h |  | 160,000 |  |
| 11 | 3.3 | Отделка потолка санузла |  | 2d | 2024-11-04 | 2024-11-07 | 10 |  |  | 32.5d | 0d | Плиточник; Панель [5 штука] | 16h |  | 55,000 |  |
| 12 | 3.4 | Отделка пола санузла |  | 2d | 2024-11-08 | 2024-11-13 | 11 |  |  | 32.5d |  | Плиточник; Плитка [5 м^2] | 16h |  | 80,000 |  |
| 13 | 3.5 | Установка сантехнического оборудования |  | 1d | 2024-09-24 A | 2024-09-25 |  | 99% | 0d | 50d |  | Слесарь-водопроводчик; Унитаз-компакт [1 штука] | 8h | 8h | 150,000 |  |
| 14 | 3.6 | Ремонт санузла завершен | milestone | 0d | 2024-09-24 A | 2024-09-24 A | 13 | 100% |  |  |  |  |  |  |  |  |
| 15 | 4 | **Ванная** |  | 11.5d | 2024-09-24 A | 2024-10-24 |  | 23% | 8.85d | 3.5d |  |  | 104h | 24h | 1,055,000 |  |
| 16 | 4.1 | Снятие штукатурки в ванной |  | 3d | 2024-09-24 A | 2024-09-26 A | 1 | 100% |  |  |  | Подсобник | 24h | 24h |  |  |
| 17 | 4.2 | Отделка стен ванной |  | 5d | 2024-09-27 | 2024-10-10 | 16 |  |  | 3.5d | 0d | Плитка [10 м^2]; Плиточник | 40h |  | 175,000 |  |
| 18 | 4.3 | Отделка потолка ванной |  | 2d | 2024-10-11 | 2024-10-16 | 17 |  |  | 3.5d | 0d | Панель [6 штука]; Плиточник | 16h |  | 60,000 |  |
| 19 | 4.4 | Отделка пола ванной |  | 2d | 2024-10-17 | 2024-10-22 | 18 |  |  | 3.5d | 0d | Плитка [6 м^2]; Плиточник | 16h |  | 90,000 |  |
| 20 | 4.5 | Установка сантехники |  | 1d | 2024-10-23 | 2024-10-24 | 19 |  |  | 3.5d | 0d | Слесарь-водопроводчик; Раковина [1 штука]; Ванна [1 штука]; Смеситель с душем [1 штука] | 8h |  | 730,000 |  |
| 21 | 4.6 | Ремонт ванной завершен | milestone | 0d | 2024-10-24 | 2024-10-24 | 20 |  |  | 3.5d |  |  |  |  |  |  |
| 22 | 5 | **Отделка стен** |  | 18d | 2024-11-05 | 2024-12-24 |  |  |  | 0d |  |  | 192h |  | 649,000 |  |
| 23 | 5.1 | Отделка стен в спальне |  | 5d | 2024-11-05 | 2024-11-18 | 7, 14, 21 |  |  | 0d |  | Штукатур; Обои [8 рулон] | 40h |  | 160,000 |  |
| 24 | 5.2 | Отделка стен в гостиной |  | 7d | 2024-11-19 | 2024-12-06 | 23 |  |  | 0d |  | Штукатур; Обои [8 рулон] | 56h |  | 176,000 |  |
| 25 | 5.3 | Отделка стен в кухне |  | 5d | 2024-12-09 | 2024-12-20 | 24 |  |  | 0d |  | Штукатур; Плиточник; Панель [10 штука]; Плитка [5 м^2] | 80h |  | 215,000 |  |
| 26 | 5.4 | Отделка стен в прихожей |  | 1d | 2024-12-23 | 2024-12-24 | 25 |  |  | 0d |  | Штукатур; Плиточник; Панель [15 штука] | 16h |  | 98,000 |  |
| 27 | 5.5 | Отделка стен завершена | milestone | 0d | 2024-12-24 | 2024-12-24 | 26 |  |  | 18d |  |  |  |  |  |  |

| ID | WBS | Task | Type | Duration | Start | Finish | Predecessors | Complete | Remaining | Total slack | Free slack | Resources | Work | Actual work | Cost | Actual cost |
| --- | --- | --- | --- | --- | --- | --- | --- | --- | --- | --- | --- | --- | --- | --- | --- | --- |
| 28 | 6 | **Потолки** |  | 20d | 2024-11-05 A | 2024-12-30 |  | 60% | 8d | 16d |  |  | 80h | 41.6h | 840,000 | 752,000 |
| 29 | 6.1 | Замер |  | 2d | 2024-11-05 A | 2024-11-08 A | 7 | 100% |  |  |  | АО "Светлый потолок" | 16h | 16h | 20,000 | 20,000 |
| 30 | 6.2 | Заказ и оплата потолков |  | 2d | 2024-11-11 A | 2024-11-14 A | 29 | 100% |  |  |  | Навесной потолок |  |  | 700,000 | 700,000 |
| 31 | 6.3 | Навесной потолок в спальне |  | 2d | 2024-12-13 A | 2024-12-18 A | 23, 30FS+10d | 100% |  |  |  | АО "Светлый потолок" | 16h | 16h | 20,000 | 20,000 |
| 32 | 6.4 | Навесной потолок в гостиной |  | 2d | 2024-12-19 A | 2024-12-24 | 24, 30FS+10d | 60% | 0.8d | 8d | 0d | АО "Светлый потолок" | 16h | 9.6h | 20,000 | 12,000 |
| 33 | 6.5 | Панельный потолок в кухне |  | 2d | 2024-12-25 | 2024-12-30 | 25, 30 |  |  | 5d | 0d | Плиточник; Панель [6 штука] | 16h |  | 60,000 |  |
| 34 | 6.6 | Навесной потолок в прихожей |  | 2d | 2024-12-25 | 2024-12-30 | 26, 30FS+10d |  |  | 0d |  | АО "Светлый потолок" | 16h |  | 20,000 |  |
| 35 | 6.7 | Монтаж потолков завершен | milestone | 0d | 2024-12-30 | 2024-12-30 | 31, 32, 33, 34 |  |  | 16d |  |  |  |  |  |  |
| 36 | 7 | **Полы** |  | 20d | 2024-12-19 | 2025-02-12 |  |  |  | 0d |  |  | 160h |  | 1,275,000 |  |
| 37 | 7.1 | Отделка полов в спальне |  | 6d | 2024-12-19 | 2025-01-03 | 31 |  |  | 14d |  | Плотник; Паркет [20 м^2] | 48h |  | 390,000 |  |
| 38 | 7.2 | Отделка полов в гостиной |  | 6d | 2025-01-06 | 2025-01-21 | 32 |  |  | 8d |  | Плотник; Паркет [20 м^2] | 48h |  | 390,000 |  |
| 39 | 7.3 | Отделка полов в кухне |  | 3d | 2025-01-22 | 2025-01-29 | 33 |  |  | 5d |  | Плотник; Паркет [10 м^2] | 24h |  | 195,000 |  |
| 40 | 7.4 | Отделка полов в прихожей |  | 5d | 2025-01-30 | 2025-02-12 | 34 |  |  | 0d |  | Плотник; Паркет [15 м^2] | 40h |  | 300,000 |  |
| 41 | 7.5 | Отделка полов завершена | milestone | 0d | 2025-02-12 | 2025-02-12 | 37, 38, 39, 40 |  |  | 0d |  |  |  |  |  |  |
| 42 | 8 | Конец проекта | milestone | 0d | 2025-02-12 | 2025-02-12 | 41 |  |  | 0d |  |  |  |  |  |  |
