# Валдайцев проект

Schedule from MS Project, 2024-02-07 to 2024-09-12, costs in ₽.

## Calendars

- Стандартный: Mon-Fri 09:00-13:00, 14:00-18:00; Sat-Sun off. Exceptions (off unless hours are given): 2024-02-08 09:00-13:00, 14:00-17:00 (Сочельник Дня Орангутанга, recurring), 2024-02-09 (День Орангутанга, recurring), 2024-02-20 09:00-13:00, 14:00-17:00 (Преддверие Дня Пылоесоса, recurring), 2024-02-21 (День Вакуумного Пылесоса, recurring).

## Resources

| Resource | Unit | Rate | Cost per use |
| --- | --- | --- | --- |
| Руководитель проекта |  | 15 |  |
| Программист 1 |  | 14 |  |
| Программист 2 |  | 15 |  |
| Программист 3 |  | 12 |  |
| Бизнес-аналитик |  | 11 |  |
| Тест-инженер |  | 8 |  |
| Технический лидер |  | 17 |  |
| Компьютер |  | 2780 |  |
| Сервер | шт. | 3950 |  |
| Принтер | шт. | 315 |  |
| Ноутбук | шт. | 2450 |  |
| МФУ | шт. | 1120 |  |
| Планшет | шт. | 1780 |  |
| Серверная ОС |  |  | 3130 |
| Бумага для принтера | уп. | 15 |  |
| Картридж для принтера | ед. | 115 |  |
| Интернет |  |  |  |

## Schedule

| ID | WBS | Task | Type | Duration | Start | Finish | Predecessors | Total slack | Free slack | Constraint | Resources | Work | Cost |
| --- | --- | --- | --- | --- | --- | --- | --- | --- | --- | --- | --- | --- | --- |
| 1 | 1 | Начало проекта | milestone | 0d | 2024-02-07 | 2024-02-07 |  | 1d | 0d |  |  |  |  |
| 2 | 2 | **Анализ и сбор требований** |  | 24d | 2024-02-07 | 2024-03-14 |  | 0d |  |  |  | 280h | 16,324 |
| 3 | 2.1 | Встреча с заказчиком |  | 1d | 2024-02-07 | 2024-02-07 | 1 | 1d | 0d |  | Бизнес-аналитик; Ноутбук [1 шт.]; Планшет [2 шт.]; Руководитель проекта; Технический лидер | 24h | 6,354 |
| 4 | 2.2 | Написание документа требований |  | 10d | 2024-02-08 | 2024-02-26 | 3 | 1d | 0d | finish no earlier than 2024-02-20 | Бизнес-аналитик; МФУ [1 шт.]; Ноутбук [1 шт.]; Технический лидер; Бумага для принтера [1 уп.]; Интернет [0.1%] | 160h | 5,835 |
| 5 | 2.3 | Тестирование требований |  | 3d | 2024-02-26 | 2024-02-29 | 4 | 1d | 0d | finish no earlier than 2024-02-09 | Тест-инженер | 24h | 192 |
| 6 | 2.4 | Встреча с заказчиком |  | 1d | 2024-03-04 | 2024-03-05 | 5FS+2d | 1d | 0d |  | Бизнес-аналитик; Руководитель проекта | 16h | 208 |
| 7 | 2.5 | Подготовка договора и устава проекта |  | 4d | 2024-03-05 | 2024-03-11 | 6 | 1d | 0d | finish no earlier than 2024-02-12 | Бумага для принтера [1 уп.]; Картридж для принтера [1 ед.]; Ноутбук [1 шт.]; Принтер [1 шт.]; Руководитель проекта | 32h | 3,375 |
| 8 | 2.6 | Согласование договора |  | 1d | 2024-03-11 | 2024-03-12 | 7 | 2d |  |  | Руководитель проекта | 8h | 120 |
| 9 | 2.7 | Согласование устава проекта |  | 2d | 2024-03-12 | 2024-03-14 | 7 | 0d |  | start no earlier than 2024-03-12 | Руководитель проекта | 16h | 240 |
| 10 | 2.8 | Утверждены договор и устав проекта | milestone | 0d | 2024-03-14 | 2024-03-14 | 8, 9 | 0d |  |  |  |  |  |
| 11 | 3 | **Проектирование решения** |  | 130.75d | 2024-03-14 | 2024-09-12 |  | 0d |  |  |  | 784h | 13,210 |
| 12 | 3.1 | Написание и согласование ТЗ |  | 15d | 2024-03-14 | 2024-04-04 | 10 | 0d |  |  | Бизнес-аналитик; Компьютер; Технический лидер; Бумага для принтера [1 уп.]; Интернет [0.1%]; Картридж для принтера [1 ед.] | 240h | 6,282 |
| 13 | 3.2 | ТЗ утерждено | milestone | 0d | 2024-04-04 | 2024-04-04 | 12 | 0d |  |  |  |  |  |
| 14 | 3.3 | Обучение специалистов предметной области |  | 16d | 2024-04-04 | 2024-04-26 | 13 | 84d | 0d | start no earlier than 2024-04-04 | Бизнес-аналитик [80%]; Руководитель проекта [50%]; Программист 1 [50%]; Программист 2 [50%]; Программист 3 [50%]; Тест-инженер [50%] | 192h | 2,400 |
| 15 | 3.4 | Проектирование архитектуры решения |  | 10d | 2024-04-29 | 2024-05-10 | 14 | 79.75d |  |  | Технический лидер [50%] | 40h | 680 |
| 16 | 3.5 | Тестирование архитектуры решения |  | 5d | 2024-09-06 | 2024-09-12 | 15 | 0d |  | as late as possible | Тест-инженер; Технический лидер | 80h | 1,000 |
| 17 | 3.6 | Установка средств разработки и тестирования |  | 8d | 2024-04-04 | 2024-04-16 | 13 | 107.75d |  | start no earlier than 2024-04-04 | Программист 1 [50%]; Программист 2 [50%]; Программист 3 [50%]; Тест-инженер [50%]; Технический лидер [50%] | 160h | 2,120 |
| 18 | 3.7 | Написание тест-плана и вариантов тестирования системы |  | 12d | 2024-04-04 | 2024-04-22 | 13 | 0d |  |  | Тест-инженер [50%] | 48h | 384 |
| 19 | 3.8 | Встреча с заказчиком |  | 2.5d | 2024-04-22 | 2024-04-24 | 18 | 0d |  |  | Бизнес-аналитик [40%]; Руководитель проекта; Технический лидер | 24h | 344 |
| 20 | 4 | **Разработка и внутреннее тестирование** |  | 75.25d | 2024-04-24 | 2024-08-07 |  | 0d |  |  |  | 1432h | 26,388 |
| 21 | 4.1 | Встреча разработчиков, декомпозиция задач, назначение ответственных |  | 1d | 2024-04-24 | 2024-04-25 | 19 | 0d |  |  | Программист 1; Программист 2; Программист 3; Технический лидер | 32h | 464 |
| 22 | 4.2 | Программирование |  | 45d | 2024-04-25 | 2024-06-27 | 21 | 0d |  |  | Программист 1; Программист 2; Программист 3; Сервер [1 шт.]; Серверная ОС [50%] | 1080h | 21,840 |
| 23 | 4.3 | Улучшение кода |  | 11d | 2024-06-27 | 2024-07-12 | 22 | 0d |  |  | Технический лидер | 88h | 1,496 |
| 24 | 4.4 | Встреча разработчиков для предварительной демонстрации |  | 1d | 2024-07-12 | 2024-07-15 | 23 | 0d |  |  | Программист 1; Программист 2; Программист 3; Технический лидер | 32h | 464 |
| 25 | 4.5 | Демонстрация заказчику |  | 1d | 2024-07-15 | 2024-07-16 | 24 | 0d |  |  | Бизнес-аналитик; Руководитель проекта; Технический лидер | 24h | 344 |
| 26 | 4.6 | Первая установка решения в среду тестирования |  | 5d | 2024-07-16 | 2024-07-23 | 25 | 0d |  |  | Тест-инженер; Технический лидер | 80h | 1,000 |
| 27 | 4.7 | Прохождение тест кейсов |  | 11.25d | 2024-07-23 | 2024-08-07 | 26 | 0d |  |  | Тест-инженер | 96h | 780 |
| 28 | 4.8 | Пройдено внутреннее тестирование | milestone | 0d | 2024-08-07 | 2024-08-07 | 27 | 0d |  |  |  |  |  |

| ID | WBS | Task | Type | Duration | Start | Finish | Predecessors | Total slack | Resources | Work | Cost |
| --- | --- | --- | --- | --- | --- | --- | --- | --- | --- | --- | --- |
| 29 | 5 | **Тестирование на стороне заказчика** |  | 16d | 2024-08-08 | 2024-08-29 |  | 0d |  | 304h | 4,224 |
| 30 | 5.1 | Первая установка в тестовую среду заказчика |  | 2d | 2024-08-08 | 2024-08-09 | 28 | 0d | Тест-инженер; Технический лидер | 32h | 400 |
| 31 | 5.2 | Поставки бета версий |  | 4d | 2024-08-12 | 2024-08-15 | 30 | 0d | Технический лидер | 32h | 544 |
| 32 | 5.3 | Доработка и исправление неисправностей |  | 10d | 2024-08-16 | 2024-08-29 | 31 | 0d | Программист 1; Программист 2; Программист 3 | 240h | 3,280 |
| 33 | 5.4 | Пройдено тестированиена стороне заказчика | milestone | 0d | 2024-08-29 | 2024-08-29 | 32 | 0d |  |  |  |
| 34 | 6 | **Внедрение** |  | 10d | 2024-08-30 | 2024-09-12 |  | 0d |  | 80h | 1,154 |
| 35 | 6.1 | Установка на рабочий сервер |  | 3d | 2024-08-30 | 2024-09-03 | 33 | 7d | Технический лидер | 24h | 408 |
| 36 | 6.2 | Написание инструкций |  | 10d | 2024-08-30 | 2024-09-12 | 33 | 0d | Бизнес-аналитик [50%]; Картридж для принтера [1 ед.]; Бумага для принтера [1 уп.] | 40h | 570 |
| 37 | 6.3 | Обучение пользователей |  | 4d | 2024-08-30 | 2024-09-04 | 33 | 6d | Бизнес-аналитик [50%] | 16h | 176 |
| 38 | 6.4 | Внедрение завершено | milestone | 0d | 2024-09-12 | 2024-09-12 | 35, 36, 37 | 0d |  |  |  |
| 39 | 6.5 | Конец проекта | milestone | 0d | 2024-09-12 | 2024-09-12 | 38 | 0d |  |  |  |
